# Program master

Schedule from MS Project, 2026-10-01 to 2027-05-27, costs in $.

## Calendars

- Standard: Mon-Fri 08:00-12:00, 13:00-17:00; Sat-Sun off.

## Resources

| Resource | Rate |
| --- | --- |
| Prgram manager | 100 |
| AI Engineer | 50 |
| Backend Developer | 40 |
| Frontend Developer | 30 |
| QA Tester | 40 |
| Database Administrator | 50 |
| Software Analyser | 80 |
| Servers |  |
| CCTV Cameras |  |
| Network Devices |  |
| Cloud Hosting |  |
| Internet Cost |  |
| AI Subscription |  |

## Schedule

| ID | WBS | Task | Type | Duration | Start | Finish | Predecessors | Total slack | Resources | Work | Cost |
| --- | --- | --- | --- | --- | --- | --- | --- | --- | --- | --- | --- |
| 1 | 1 | **AI Traffic Management System** |  | 130d | 2026-10-01 | 2027-03-31 |  | 0d |  | 6000h | 352,000 |
| 2 | 1.1 | Project Approved | milestone, manual | 0d | 2026-10-01 | 2026-10-01 |  |  | Prgram manager |  |  |
| 3 | 1.2 | Requirements Gathering | manual | 1mo | 2026-10-01 | 2026-10-28 |  |  | Database Administrator; Prgram manager; Software Analyser | 480h | 36,800 |
| 4 | 1.3 | System Analysis | manual | 2mo | 2026-10-01 | 2026-11-25 | 2 |  | Software Analyser; Database Administrator | 640h | 41,600 |
| 5 | 1.4 | Camera Data Collection | manual | 20d | 2026-10-29 | 2026-11-25 | 3 |  | AI Engineer; CCTV Cameras; Database Administrator; Software Analyser; Prgram manager | 640h | 44,800 |
| 6 | 1.5 | AI Models Desgin | manual | 1.5mo | 2026-11-26 | 2027-01-06 | 4 |  | AI Engineer; AI Subscription [0.1%]; Backend Developer; Database Administrator; Cloud Hosting [0.1%] | 720h | 33,600 |
| 7 | 1.6 | Database Desgin | manual | 1mo | 2026-10-29 | 2026-11-25 | 3 |  | Database Administrator | 160h | 8,000 |
| 8 | 1.7 | System Development | manual | 2mo | 2027-01-07 | 2027-03-03 | 5, 6 |  | AI Engineer; Backend Developer; Prgram manager; Database Administrator; Software Analyser; Servers; Frontend Developer; Internet Cost [0.1%]; Network Devices; Cloud Hosting [0.1%] | 1920h | 112,000 |
| 9 | 1.8 | System Desgin | manual | 1mo | 2026-11-26 | 2026-12-23 | 7 |  | AI Engineer; Backend Developer; Frontend Developer; Prgram manager; Software Analyser; Internet Cost [0.1%]; Cloud Hosting [0.1%] | 800h | 48,000 |
| 10 | 1.9 | Deployment | manual | 1mo | 2027-03-04 | 2027-03-31 | 8 |  | AI Engineer; Backend Developer; Cloud Hosting [0.1%]; Database Administrator; Frontend Developer; Internet Cost [0.1%]; Network Devices | 640h | 27,200 |
| 11 | 1.10 | Traffic System Complated | milestone, manual | 0d | 2026-12-24 | 2026-12-24 | 9 |  | Software Analyser; Prgram manager; Database Administrator |  |  |
| 12 | 2 | **Smart Medical Diaognsis System** |  | 150d | 2026-10-29 | 2027-05-27 |  | 0d |  | 2160h | 128,800 |
| 13 | 2.1 | Project Approved | milestone, manual | 0d | 2026-10-29 | 2026-10-29 |  |  | Prgram manager |  |  |
| 14 | 2.2 | Requirement Analysis | manual | 1mo | 2026-10-29 | 2026-11-25 |  |  | Software Analyser; Database Administrator | 320h | 20,800 |
| 15 | 2.3 | Medical Data Collection | manual | 1.5mo | 2026-11-26 | 2027-01-06 | 14 |  | Database Administrator | 240h | 12,000 |
| 16 | 2.4 | Data Cleaning | manual | 1mo | 2027-01-07 | 2027-02-03 | 15 |  | Software Analyser; Database Administrator | 320h | 20,800 |
| 17 | 2.5 | AI Model Training | manual | 1mo | 2027-02-04 | 2027-03-03 | 14, 15, 16 |  | AI Engineer; AI Subscription [0.1%] | 160h | 8,000 |
| 18 | 2.6 | Interface Desgin | manual | 20d | 2026-11-26 | 2026-12-23 | 14 |  | Frontend Developer | 160h | 4,800 |
| 19 | 2.7 | System Integration | manual | 1mo | 2027-03-04 | 2027-03-31 | 14, 17, 18 |  | Prgram manager; Software Analyser | 320h | 28,800 |
| 20 | 2.8 | System Testing | manual | 1mo | 2027-04-01 | 2027-04-28 | 19 |  | QA Tester; Servers; Network Devices | 160h | 6,400 |
| 21 | 2.9 | Final Deployment | manual | 20d | 2027-04-29 | 2027-05-26 | 20 |  | Backend Developer; AI Engineer; Software Analyser | 480h | 27,200 |
| 22 | 2.10 | Medical System Complated | milestone, manual | 0d | 2027-05-27 | 2027-05-27 | 21 |  | Prgram manager |  |  |
| 23 | 3 | **AI Face Recognition Security System** |  | 170d | 2026-10-01 | 2027-05-27 |  | 0d |  | 2000h | 118,000 |
| 24 | 3.1 | Project Approved | milestone, manual | 0d | 2026-10-01 | 2026-10-01 |  |  | Prgram manager |  |  |
| 25 | 3.2 | Dataset Collection | manual | 1mo | 2026-10-01 | 2026-10-28 |  |  | Software Analyser; Database Administrator | 320h | 20,800 |
| 26 | 3.3 | Face Detection Design | manual | 1mo | 2026-10-29 | 2026-11-25 | 25 |  | AI Engineer; Software Analyser; CCTV Cameras; Cloud Hosting [0.1%] | 320h | 20,800 |
| 27 | 3.4 | AI Algorithm Development | manual | 2mo | 2026-11-26 | 2027-01-20 | 25, 26 |  | AI Engineer; AI Subscription [0.1%] | 320h | 16,000 |
| 28 | 3.5 | Security Integration | manual | 1.5mo | 2027-01-21 | 2027-03-03 | 26, 27 |  | Software Analyser; Network Devices | 240h | 19,200 |
| 29 | 3.6 | Database Connection | manual | 15d | 2027-03-04 | 2027-03-24 | 25, 28 |  | Database Administrator; Backend Developer; Servers; Network Devices; Internet Cost [0.1%] | 240h | 10,800 |
| 30 | 3.7 | System Testing | manual | 1mo | 2027-03-25 | 2027-04-21 | 29 |  | QA Tester; Servers; Network Devices; Internet Cost [0.1%] | 160h | 6,400 |
| 31 | 3.8 | Bug Fixing | manual | 15d | 2027-04-22 | 2027-05-12 | 30 |  | QA Tester; Backend Developer | 240h | 9,600 |
| 32 | 3.9 | Final Deployment | manual | 10d | 2027-05-13 | 2027-05-26 | 31 |  | Prgram manager; Software Analyser; Servers; Network Devices; Internet Cost [0.1%]; CCTV Cameras | 160h | 14,400 |
| 33 | 3.10 | Security System Completed | milestone, manual | 0d | 2027-05-27 | 2027-05-27 | 32 |  | Prgram manager |  |  |

| ID | WBS | Task | Type | Duration | Start | Finish | Predecessors | Total slack | Resources | Work | Cost |
| --- | --- | --- | --- | --- | --- | --- | --- | --- | --- | --- | --- |
| 34 | 4 | **Smart Recommendation System** |  | 125d | 2026-10-01 | 2027-03-25 |  | 0d |  | 2200h | 138,000 |
| 35 | 4.1 | Project Approved | milestone, manual | 0d | 2026-10-01 | 2026-10-01 |  |  | Prgram manager |  |  |
| 36 | 4.2 | Requirement Gathering | manual | 1mo | 2026-10-01 | 2026-10-28 |  |  | Software Analyser; Database Administrator | 320h | 20,800 |
| 37 | 4.3 | User Data Collection | manual | 1mo | 2026-10-29 | 2026-11-25 | 36 |  | Database Administrator; Software Analyser | 320h | 20,800 |
| 38 | 4.4 | Database Setup | manual | 20d | 2026-11-26 | 2026-12-23 | 37 |  | Database Administrator; Cloud Hosting [0.1%]; Internet Cost [0.1%]; Network Devices | 160h | 8,000 |
| 39 | 4.5 | Recommendation Algorithm | manual | 10d | 2026-10-29 | 2026-11-11 | 36 |  | AI Engineer; Software Analyser | 160h | 10,400 |
| 40 | 4.6 | Front-End Development | manual | 1mo | 2026-11-26 | 2026-12-23 | 36, 37 |  | Frontend Developer | 160h | 4,800 |
| 41 | 4.7 | System Integration | manual | 25d | 2026-12-24 | 2027-01-27 | 38, 40 |  | Prgram manager; Software Analyser; Database Administrator; Internet Cost [0.1%]; Network Devices; Servers | 600h | 46,000 |
| 42 | 4.8 | Testing | manual | 1mo | 2027-01-28 | 2027-02-24 | 41 |  | AI Engineer; QA Tester; Internet Cost [0.1%]; Network Devices | 320h | 14,400 |
| 43 | 4.9 | Maintenance Planning | manual | 20d | 2027-02-25 | 2027-03-24 | 42 |  | Software Analyser | 160h | 12,800 |
| 44 | 4.10 | Recommendation System Completed | milestone, manual | 0d | 2027-03-25 | 2027-03-25 | 43 |  | Prgram manager |  |  |
